# Списываний.нет

Schedule from MS Project, 2024-10-15 to 2025-01-30.

## Calendars

- Standard: Mon-Fri 08:00-12:00, 13:00-17:00; Sat-Sun off.

## Resources

| Resource |
| --- |
| backend разработчик |
| frontend разработчик |
| devops-инженер |
| менеджер проекта |

## Schedule

| ID | WBS | Task | Duration | Start | Finish | Predecessors | Total slack | Free slack | Resources | Work |
| --- | --- | --- | --- | --- | --- | --- | --- | --- | --- | --- |
| 1 | 1 | **Веб-приложение «Списыванийнет»** | 78d | 2024-10-15 | 2025-01-30 |  | 0d |  |  | 1196h |
| 2 | 1.1 | **Управление проектом** | 22d | 2024-10-15 | 2024-11-13 |  | 0d |  |  | 120h |
| 3 | 1.1.1 | **Project scope** | 9d | 2024-10-15 | 2024-10-25 |  | 0d |  |  | 72h |
| 4 | 1.1.1.1 | **Цели проекта** | 2d | 2024-10-15 | 2024-10-16 |  | 0d |  |  | 16h |
| 5 | 1.1.1.1.1 | Составить бизнес цели проекты | 1d | 2024-10-15 | 2024-10-15 |  | 0d |  | менеджер проекта | 8h |
| 6 | 1.1.1.1.2 | Составить цели завершения проекта | 1d | 2024-10-16 | 2024-10-16 | 5 | 0d |  | менеджер проекта | 8h |
| 7 | 1.1.1.2 | **Обоснование проекта** | 3d | 2024-10-17 | 2024-10-21 |  | 9d |  |  | 24h |
| 8 | 1.1.1.2.1 | Провести анализ проблемы студентов | 2d | 2024-10-17 | 2024-10-18 | 6 | 9d | 0d | менеджер проекта | 16h |
| 9 | 1.1.1.2.2 | Провести анализ существующих аналогов | 1d | 2024-10-21 | 2024-10-21 | 6 | 62d | 0d | менеджер проекта | 8h |
| 10 | 1.1.1.3 | **Границы проекта** | 2d | 2024-10-22 | 2024-10-23 |  | 71d |  |  | 16h |
| 11 | 1.1.1.3.1 | Разработать scope проекта | 2d | 2024-10-22 | 2024-10-23 | 8, 9 | 71d |  | менеджер проекта | 16h |
| 12 | 1.1.1.4 | **Критерии успеха** | 2d | 2024-10-24 | 2024-10-25 |  | 69d |  |  | 16h |
| 13 | 1.1.1.4.1 | Определить денежный эквивалент успеха | 1d | 2024-10-24 | 2024-10-24 | 6 | 70d |  | менеджер проекта | 8h |
| 14 | 1.1.1.4.2 | Определить эквивалент успеха в количестве сдавших студентов | 1d | 2024-10-25 | 2024-10-25 | 6 | 69d |  | менеджер проекта | 8h |
| 15 | 1.1.2 | **Реестр ирисок** | 5d | 2024-11-05 | 2024-11-11 |  | 56d |  |  | 16h |
| 16 | 1.1.2.1 | Определить вкусы ирисок | 1d | 2024-11-05 | 2024-11-05 | 8, 9, 20 | 56d | 0d | менеджер проекта | 8h |
| 17 | 1.1.2.2 | Определить стратегии реагирования на вкусы ирисок | 1d | 2024-11-11 | 2024-11-11 | 16 | 56d | 0d | менеджер проекта | 8h |
| 18 | 1.1.3 | **Реестр заинтересованных сторон** | 2d | 2024-10-28 | 2024-10-29 |  | 56d |  |  | 16h |
| 19 | 1.1.3.1 | Определить заинтересованные стороны | 1d | 2024-10-28 | 2024-10-28 |  | 56d | 0d | менеджер проекта | 8h |
| 20 | 1.1.3.2 | Определить степень влияния каждой из сторон | 1d | 2024-10-29 | 2024-10-29 | 19 | 56d | 0d | менеджер проекта | 8h |
| 21 | 1.1.4 | **План проекта** | 2d | 2024-11-12 | 2024-11-13 |  | 56d |  |  | 16h |
| 22 | 1.1.4.1 | Построить сетевой график проекта | 1d | 2024-11-12 | 2024-11-12 | 17, 19 | 56d | 0d | менеджер проекта | 8h |
| 23 | 1.1.4.2 | Построить диаграмму Ганта | 1d | 2024-11-13 | 2024-11-13 | 22 | 56d |  | менеджер проекта | 8h |
| 24 | 1.2 | **Требования к проекту** | 22d | 2024-10-21 | 2024-11-19 |  | 7d |  |  | 104h |
| 25 | 1.2.1 | **Пользовательские требования** | 4d | 2024-10-30 | 2024-11-04 |  | 0d |  |  | 32h |
| 26 | 1.2.1.1 | Провести интервью со студентами | 2d | 2024-10-30 | 2024-10-31 | 6 | 0d |  | менеджер проекта | 16h |
| 27 | 1.2.1.2 | Составить пользовательские сценарии | 2d | 2024-11-01 | 2024-11-04 | 8, 26 | 0d |  | менеджер проекта | 16h |

| ID | WBS | Task | Duration | Start | Finish | Predecessors | Total slack | Free slack | Resources | Work |
| --- | --- | --- | --- | --- | --- | --- | --- | --- | --- | --- |
| 28 | 1.2.2 | **Функциональные требования** | 8d | 2024-11-06 | 2024-11-15 |  | 1d |  |  | 40h |
| 29 | 1.2.2.1 | Составить user stories | 2d | 2024-11-06 | 2024-11-07 | 27 | 1d | 0d | менеджер проекта | 16h |
| 30 | 1.2.2.2 | Составить требования к интерфейсу | 2d | 2024-11-08 | 2024-11-14 | 27 | 0d |  | менеджер проекта | 16h |
| 31 | 1.2.2.3 | Сделать диаграмму прецедентов | 1d | 2024-11-15 | 2024-11-15 | 29 | 54d |  | менеджер проекта | 8h |
| 32 | 1.2.3 | **Нефункциональные требования** | 22d | 2024-10-21 | 2024-11-19 |  | 52d |  |  | 32h |
| 33 | 1.2.3.1 | Составить требования к безопасности | 4d | 2024-10-21 | 2024-11-19 | 8 | 52d |  | backend разработчик; менеджер проекта | 32h |
| 34 | 1.3 | **Разработка** | 28d | 2024-11-08 | 2024-12-17 |  | 6d |  |  | 432h |
| 35 | 1.3.1 | **Веб-клиент** | 23d | 2024-11-15 | 2024-12-17 |  | 5d |  |  | 184h |
| 36 | 1.3.1.1 | **Макет пользовательского интерфейса** | 10d | 2024-11-15 | 2024-11-28 |  | 4d |  |  | 80h |
| 37 | 1.3.1.1.1 | Сверстать макет страницы загрузки шпаргалки | 2d | 2024-11-15 | 2024-11-18 | 30 | 5d | 1d | frontend разработчик | 16h |
| 38 | 1.3.1.1.2 | Сверстать макет страницы просмотра каталога шпаргалок | 2d | 2024-11-19 | 2024-11-20 | 30 | 7d | 1d | frontend разработчик | 16h |
| 39 | 1.3.1.1.3 | Сверстать макет страницы просмотра шпаргалки | 2d | 2024-11-21 | 2024-11-22 | 30 | 5d | 0d | frontend разработчик | 16h |
| 40 | 1.3.1.1.4 | Сверстать макет редактирования шапрагалки | 2d | 2024-11-25 | 2024-11-26 | 30 | 6d | 0d | frontend разработчик | 16h |
| 41 | 1.3.1.1.5 | Сверстать макет страницы админа | 2d | 2024-11-27 | 2024-11-28 | 30 | 0d |  | frontend разработчик | 16h |
| 42 | 1.3.1.2 | **Компоненты пользовательского интерфейса** | 13d | 2024-11-29 | 2024-12-17 |  | 8d |  |  | 104h |
| 43 | 1.3.1.2.1 | Написать компоненты страницы загрузки шпаргалки | 3d | 2024-12-05 | 2024-12-09 | 37, 54, 80 | 4d | 0d | frontend разработчик | 24h |
| 44 | 1.3.1.2.2 | Написать компоненты страницы просмотра каталога шпаргалок | 3d | 2024-12-10 | 2024-12-12 | 38, 56, 80 | 35d |  | frontend разработчик | 24h |
| 45 | 1.3.1.2.3 | Написать компоненты страницы просмотра шпаргалки | 2d | 2024-12-04 | 2024-12-13 | 39, 56, 80 | 34d |  | frontend разработчик | 16h |
| 46 | 1.3.1.2.4 | Написать компоненты редактирования шапрагалки | 2d | 2024-12-16 | 2024-12-17 | 40, 58, 80 | 6d | 0d | frontend разработчик | 16h |
| 47 | 1.3.1.2.5 | Написать компоненты страницы админа | 3d | 2024-11-29 | 2024-12-03 | 41, 60, 80 | 42d |  | frontend разработчик | 24h |
| 48 | 1.3.2 | **Серверное приложение** | 16d | 2024-11-08 | 2024-11-29 |  | 6d |  |  | 248h |
| 49 | 1.3.2.1 | **База данных** | 3d | 2024-11-08 | 2024-11-12 |  | 57d |  |  | 32h |
| 50 | 1.3.2.1.1 | Построить ER диаграмму | 1d | 2024-11-08 | 2024-11-08 | 8, 26, 29 | 57d | 0d | backend разработчик | 8h |
| 51 | 1.3.2.1.2 | Написать скрипт развёртывания БД | 2d | 2024-11-11 | 2024-11-12 | 50 | 57d |  | backend разработчик | 16h |
| 52 | 1.3.2.1.3 | Написать скрипт заполнения БД начальными данными | 1d | 2024-11-11 | 2024-11-11 | 50 | 58d |  | backend разработчик | 8h |

| ID | WBS | Task | Duration | Start | Finish | Predecessors | Total slack | Free slack | Resources | Work |
| --- | --- | --- | --- | --- | --- | --- | --- | --- | --- | --- |
| 53 | 1.3.2.2 | **Приложение бизнес-логики** | 16d | 2024-11-08 | 2024-11-29 |  | 6d |  |  | 216h |
| 54 | 1.3.2.2.1 | Написать API загрузки шпаргалок | 2d | 2024-11-18 | 2024-11-19 | 29 | 4d | 0d | backend разработчик | 16h |
| 55 | 1.3.2.2.2 | Написать серверную логику загрузки шпаргалок | 5d | 2024-11-21 | 2024-11-28 | 54, 80 | 11d | 7d | backend разработчик | 40h |
| 56 | 1.3.2.2.3 | Написать API просмотра шпаргалок | 2d | 2024-11-20 | 2024-11-21 | 29 | 2d | 0d | backend разработчик | 16h |
| 57 | 1.3.2.2.4 | Написать серверную логику просмотра шпаргалок | 4d | 2024-11-22 | 2024-11-27 | 56, 80 | 2d | 0d | backend разработчик | 32h |
| 58 | 1.3.2.2.5 | Написать API редактирования шпаргалок | 2d | 2024-11-13 | 2024-11-14 | 29 | 14d | 0d | backend разработчик | 16h |
| 59 | 1.3.2.2.6 | Написать серверную логику редактирования шпаргалок | 4d | 2024-11-15 | 2024-11-29 | 58, 80 | 18d | 12d | backend разработчик | 32h |
| 60 | 1.3.2.2.7 | Написать API администрирования | 2d | 2024-11-08 | 2024-11-12 | 29 | 6d | 0d | backend разработчик | 16h |
| 61 | 1.3.2.2.8 | Написать серверную логику администрирования | 6d | 2024-11-13 | 2024-11-20 | 60, 80 | 6d |  | backend разработчик | 48h |
| 62 | 1.4 | **Тестирование** | 36d | 2024-11-29 | 2025-01-17 |  | 0d |  |  | 416h |
| 63 | 1.4.1 | **Модульное тестирование** | 21d | 2024-11-29 | 2024-12-27 |  | 0d |  |  | 128h |
| 64 | 1.4.1.1 | Протестировать работу загрузки шпаргалок | 4d | 2024-12-10 | 2024-12-23 | 43, 54, 55 | 4d |  | backend разработчик; frontend разработчик | 32h |
| 65 | 1.4.1.2 | Протестировать работу просмотра шпаргалок | 4d | 2024-12-02 | 2024-12-25 | 38, 39, 56, 57 | 2d |  | backend разработчик; frontend разработчик | 32h |
| 66 | 1.4.1.3 | Протестировать работу редактирования шпаргалок | 2d | 2024-12-18 | 2024-12-19 | 46, 58, 59 | 6d |  | backend разработчик; frontend разработчик | 32h |
| 67 | 1.4.1.4 | Протестировать работу администрирования шпаргалок | 4d | 2024-11-29 | 2024-12-27 | 41, 60, 61 | 0d |  | backend разработчик; frontend разработчик | 32h |
| 68 | 1.4.2 | **Интеграционное тестирование** | 12d | 2024-12-30 | 2025-01-14 |  | 0d |  |  | 192h |
| 69 | 1.4.2.1 | Протестировать работу загрузки шпаргалок совместно с другми модулями | 3d | 2025-01-02 | 2025-01-06 | 64, 65, 66, 67 | 6d |  | backend разработчик; frontend разработчик | 48h |
| 70 | 1.4.2.2 | Протестировать работу просмотра шпаргалок совместно с другми модулями | 6d | 2025-01-02 | 2025-01-09 | 64, 65, 66, 67 | 3d |  | backend разработчик; frontend разработчик | 48h |
| 71 | 1.4.2.3 | Протестировать работу редактирования шпаргалок совместно с другми модулями | 6d | 2024-12-30 | 2025-01-14 | 64, 65, 66, 67 | 0d |  | backend разработчик; frontend разработчик | 48h |
| 72 | 1.4.2.4 | Протестировать работу администрирования шпаргалок совместно с другми модулями | 3d | 2024-12-30 | 2025-01-01 | 64, 65, 66, 67 | 9d |  | backend разработчик; frontend разработчик | 48h |
| 73 | 1.4.3 | **Системное тестирование** | 3d | 2025-01-15 | 2025-01-17 |  | 0d |  |  | 96h |
| 74 | 1.4.3.1 | Проверить работоспособность всего приложения | 3d | 2025-01-15 | 2025-01-17 | 69, 70, 71, 72 | 0d |  | backend разработчик; devops-инженер; frontend разработчик; менеджер проекта | 96h |
| 75 | 1.5 | **Развёртывание** | 2.5d | 2024-11-08 | 2024-11-12 |  | 5.5d |  |  | 20h |
| 76 | 1.5.1 | **Арендованный сервер** | 1.5d | 2024-11-08 | 2024-11-11 |  | 5.5d |  |  | 12h |
| 77 | 1.5.1.1 | Арендовать VDS | 0.5d | 2024-11-08 | 2024-11-08 | 29 | 5.5d | 0d | devops-инженер | 4h |
| 78 | 1.5.1.2 | Настроить окружение на сервере | 1d | 2024-11-08 | 2024-11-11 | 77 | 58.5d |  | devops-инженер | 8h |

| ID | WBS | Task | Duration | Start | Finish | Predecessors | Total slack | Free slack | Resources | Work |
| --- | --- | --- | --- | --- | --- | --- | --- | --- | --- | --- |
| 79 | 1.5.2 | **CI/CD pipeline** | 1d | 2024-11-11 | 2024-11-12 |  | 6.5d |  |  | 8h |
| 80 | 1.5.2.1 | Настроить Github actions | 1d | 2024-11-11 | 2024-11-12 | 77 | 6.5d | 0.5d | devops-инженер | 8h |
| 81 | 1.6 | **Поддержка** | 9d | 2025-01-20 | 2025-01-30 |  | 0d |  |  | 104h |
| 82 | 1.6.1 | **Поддержка пользователя** | 5d | 2025-01-20 | 2025-01-24 |  | 4d |  |  | 40h |
| 83 | 1.6.1.1 | Читать отзывы студентов о приложении в соц. сетях | 5d | 2025-01-20 | 2025-01-24 | 74 | 4d |  | менеджер проекта | 40h |
| 84 | 1.6.2 | **Поддержка продукта** | 4d | 2025-01-27 | 2025-01-30 |  | 0d |  |  | 64h |
| 85 | 1.6.2.1 | Исправить баги, найденные после релиза приложения | 4d | 2025-01-27 | 2025-01-30 | 74 | 0d |  | backend разработчик; frontend разработчик | 64h |
